# Proyecto3_2

Schedule from MS Project, 2015-02-12 to 2015-09-18, costs in €.

## Calendars

- Estándar: Mon-Fri 09:00-13:00, 15:00-19:00; Sat-Sun off.

## Resources

| Resource |
| --- |
| Enrique Moreno |
| Encarna Marín |
| Sebastián Del Rio |
| Vicente Pérez |
| Cursos .NET |
| Alba Martínez |
| Ana Sebastián (A) |
| Jose Luis Fernández |
| María Peris |
| Silvia Cerezo (T) |
| Silvia Cerezo (P) |
| Ana Sebastián (PW) |
| Rafael Benito |
| Maquinas expendedoras |
| Ordenadores (taquilla) |
| Ordenadores (web) |
| Muebles |
| Servidor |
| Butacas |
| Moqueta |
| Instaladores butacas/moqueta |
| Oficiales electricos |
| Aprendices electricos |
| Iluminado |
| Aire acondicionado |
| Instalador AC experimentado |
| Instalador AC Nobel |
| Operarios de limpieza |
| Material de limpieza |
| Agua potable |
| Luz electrica |
| Oficinas |
| Dietas |
| Seguro |

## Schedule

| ID | WBS | Task | Type | Duration | Start | Finish | Predecessors | Total slack | Free slack | Constraint | Resources | Work | Cost |
| --- | --- | --- | --- | --- | --- | --- | --- | --- | --- | --- | --- | --- | --- |
| 1 | 1 | **Responsabilidad de la dirección** |  | 152.38d | 2015-02-18 | 2015-09-18 |  | 0d |  |  |  | 1656h | 4,159.35 |
| 2 | 1.1 | 1 reunión con cliente |  | 1d | 2015-02-18 | 2015-02-19 |  | 151.38d |  |  | Enrique Moreno | 8h | 82.5 |
| 3 | 1.2 | Presentación de proyecto al cliente | manual | 1d | 2015-03-11 | 2015-03-12 | 60 |  |  |  | Enrique Moreno | 8h | 82.5 |
| 4 | 1.3 | Gastos indirectos | manual | 41d | 2015-02-18 | 2015-04-15 |  |  |  |  | Agua potable; Dietas; Luz electrica; Oficinas; Seguro | 1640h | 3,994.35 |
| 5 | 1.4 | Taquillas y equipos instalados | milestone, manual | 0d | 2015-02-23 | 2015-02-23 | 35 |  |  |  |  |  |  |
| 6 | 1.5 | Finalización de sala 3D | milestone, manual | 0d | 2015-09-18 | 2015-09-18 | 42 |  |  |  |  |  |  |
| 7 | 1.6 | Finalización de sala digital | milestone, manual | 0d | 2015-04-24 | 2015-04-24 | 49 |  |  |  |  |  |  |
| 8 | 1.7 | Finalización de sala VO | milestone, manual | 0d | 2015-08-28 | 2015-08-28 | 56 |  |  |  |  |  |  |
| 9 | 1.8 | Finalización web | milestone, manual | 0d | 2015-04-15 | 2015-04-15 | 83 |  |  |  |  |  |  |
| 10 | 1.9 | Entrega final | milestone, manual | 0d | 2015-09-18 | 2015-09-18 | 42 |  |  |  |  |  |  |
| 11 | 2 | **Gestión de recursos** |  | 13.25d | 2015-02-12 | 2015-03-03 |  | 2.25d |  |  |  | 291.2h | 3,014.62 |
| 12 | 2.1 | Busqueda de proveedores de máquinas expendedoras |  | 5.62d | 2015-02-12 | 2015-02-19 |  | 150.38d |  | finish no earlier than 2015-02-19 | Silvia Cerezo (T) [20%] | 9h | 101.25 |
| 13 | 2.2 | Busqueda de proveedores de ordenadores |  | 1d | 2015-02-18 | 2015-02-19 |  | 151.38d |  |  | Rafael Benito [20%] | 1.6h | 13.75 |
| 14 | 2.3 | Busqueda de proveedores de muebles |  | 1.12d | 2015-02-18 | 2015-02-19 |  | 151.25d |  |  | Rafael Benito [20%] | 1.8h | 15.47 |
| 15 | 2.4 | Busqueda de proveedores de proyectores |  | 1.12d | 2015-02-18 | 2015-02-19 |  | 151.25d |  |  | Rafael Benito [20%] | 1.8h | 15.47 |
| 16 | 2.5 | Busqueda de empresas de electricidad |  | 1.12d | 2015-02-18 | 2015-02-19 |  | 151.25d |  |  | Rafael Benito [20%] | 1.8h | 15.47 |
| 17 | 2.6 | Busqueda de instaladores de aire acondicionado |  | 1.12d | 2015-02-18 | 2015-02-19 |  | -1.5d | 0d |  | Rafael Benito [20%] | 1.8h | 15.47 |
| 18 | 2.7 | Busqueda de instaladores de moqueta/sillones |  | 1d | 2015-02-18 | 2015-02-19 |  | 151.38d |  |  | Silvia Cerezo (T) [20%] | 1.6h | 18 |
| 19 | 2.8 | Busqueda de cursos .NET |  | 1d | 2015-02-18 | 2015-02-18 |  | 151.38d |  |  | Silvia Cerezo (T) [20%] | 1.4h | 15.75 |
| 20 | 2.9 | Contratación de instaladores eléctricos |  | 1d | 2015-02-18 | 2015-02-19 |  | 151.38d |  |  | Silvia Cerezo (T) [20%] | 1.6h | 18 |
| 21 | 2.10 | Contratación de instaladores de AC |  | 1d | 2015-02-18 | 2015-02-19 |  | 151.38d |  |  | Silvia Cerezo (T) [20%] | 1.6h | 18 |
| 22 | 2.11 | Contratación de instaladores moqueda/sillones |  | 1d | 2015-02-18 | 2015-02-19 |  | 151.38d |  |  | Ana Sebastián (A) [20%] | 1.6h | 14 |
| 23 | 2.12 | Matriculación en cursos |  | 1d | 2015-02-18 | 2015-02-19 |  | 151.38d |  |  | Ana Sebastián (A) [20%] | 1.6h | 14 |
| 24 | 2.13 | Cursos de .NET | manual | 8.5d | 2015-02-19 | 2015-03-03 |  |  |  |  | Cursos .NET; Encarna Marín; Enrique Moreno; Sebastián Del Rio; Vicente Pérez | 264h | 2,740 |

| ID | WBS | Task | Type | Duration | Start | Finish | Predecessors | Total slack | Free slack | Resources | Work | Cost |
| --- | --- | --- | --- | --- | --- | --- | --- | --- | --- | --- | --- | --- |
| 25 | 3 | **Realización del producto** |  | 1d? | 2015-02-18 | 2015-02-18 |  |  |  |  | 5145.5h | 718,706.53 |
| 26 | 3.1 | Planificación instalación de máquinas |  | 1d | 2015-02-18 | 2015-02-19 |  | -0.25d | 0d | Jose Luis Fernández [20%] | 1.6h | 11 |
| 27 | 3.2 | Planificación instalación de salas |  | 1d | 2015-02-18 | 2015-02-19 |  | -0.25d | 0d | Jose Luis Fernández [20%] | 1.6h | 11 |
| 28 | 3.3 | Planificación portal web |  | 1d | 2015-02-18 | 2015-02-19 |  | -0.25d | 0d | Jose Luis Fernández [20%] | 1.6h | 11 |
| 29 | 3.4 | Compra de las máquinas |  | 1d | 2015-02-18 | 2015-02-19 |  | -0.25d | 0d | Jose Luis Fernández [10%]; Maquinas expendedoras [2000%] | 0.8h | 4,005.5 |
| 30 | 3.5 | Compra de ordenadores |  | 1d | 2015-02-18 | 2015-02-19 |  | -0.25d | 0d | Jose Luis Fernández [10%]; Ordenadores (taquilla) [2000%]; Ordenadores (web) [300%] | 0.8h | 10,135.5 |
| 31 | 3.6 | Comprar servidor |  | 1.12d | 2015-02-19 | 2015-02-20 | 17 | -1.5d | 0d | Rafael Benito; Servidor | 9h | 2,077.34 |
| 32 | 3.7 | Compra de muebles |  | 1d | 2015-02-18 | 2015-02-19 |  | -0.25d | 0d | Jose Luis Fernández [10%]; Muebles | 0.8h | 20,005.5 |
| 33 | 3.8 | Instalación de máquinas |  | 3d | 2015-02-18 | 2015-02-20 |  | -2d | 0d |  |  |  |
| 34 | 3.9 | Instalación de ordenadores |  | 3d | 2015-02-18 | 2015-02-20 |  | -2d | 0d |  |  |  |
| 35 | 3.10 | Instalación de mobiliario |  | 3d | 2015-02-18 | 2015-02-20 |  | -2d | 0d |  |  |  |
| 36 | 3.11 | **Sala 3d** |  | 152.38d | 2015-02-18 | 2015-09-18 |  | -44.5d | 0d |  | 1275.9h | 223,898.44 |
| 37 | 3.11.1 | Comprar proyector y gafas | manual | 1d | 2015-02-18 | 2015-02-18 |  |  |  | Vicente Pérez [10%] | 0.9h | 8.44 |
| 38 | 3.11.2 | Poner butacas | manual | 15d | 2015-03-04 | 2015-03-25 | 40 |  |  | Butacas; Instaladores butacas/moqueta | 120h | 59,600 |
| 39 | 3.11.3 | Instalar aire acondicionado | manual | 20d | 2015-08-19 | 2015-09-16 | 46 |  |  | Aire acondicionado; Instalador AC experimentado; Instalador AC Nobel | 320h | 110,400 |
| 40 | 3.11.4 | Moqueta |  | 10.12d | 2015-02-18 | 2015-03-04 |  | -9.25d | 0d | Moqueta; Instaladores butacas/moqueta | 81h | 9,480 |
| 41 | 3.11.5 | Iluminado |  | 45.12d | 2015-04-22 | 2015-06-24 | 48 | -89.62d | 0d | Aprendices electricos; Iluminado; Oficiales electricos | 722h | 42,490 |
| 42 | 3.11.6 | Limpieza | manual | 2d | 2015-09-16 | 2015-09-18 | 39 |  |  | Material de limpieza; Operarios de limpieza | 32h | 1,920 |
| 43 | 3.12 | **Sala digital** |  | 130.38d | 2015-02-18 | 2015-08-19 |  | -89.5d | 0d |  | 1273.7h | 223,746.56 |
| 44 | 3.12.1 | Compra de proyector | manual | 0.75d | 2015-02-18 | 2015-02-18 |  |  |  | Vicente Pérez [10%] | 0.7h | 6.56 |
| 45 | 3.12.2 | Poner butacas | manual | 15d | 2015-05-13 | 2015-06-03 | 47 |  |  | Butacas; Instaladores butacas/moqueta | 120h | 59,600 |
| 46 | 3.12.3 | Instalar aire acondicionado | manual | 20d | 2015-07-22 | 2015-08-19 | 53 |  |  | Aire acondicionado; Instalador AC experimentado; Instalador AC Nobel | 320h | 110,400 |
| 47 | 3.12.4 | Moqueta | manual | 10d | 2015-04-29 | 2015-05-13 | 52 |  |  | Instaladores butacas/moqueta; Moqueta | 80h | 9,400 |
| 48 | 3.12.5 | Iluminado |  | 45d | 2015-02-18 | 2015-04-22 |  | -89.5d | 0d | Aprendices electricos; Iluminado; Oficiales electricos | 720h | 42,400 |
| 49 | 3.12.6 | Limpieza |  | 2.62d | 2015-04-22 | 2015-04-24 | 48 | -46.38d | 0d | Material de limpieza; Operarios de limpieza | 33h | 1,940 |

| ID | WBS | Task | Type | Duration | Start | Finish | Predecessors | Total slack | Free slack | Constraint | Resources | Work | Cost |
| --- | --- | --- | --- | --- | --- | --- | --- | --- | --- | --- | --- | --- | --- |
| 50 | 3.13 | **Sala VO** |  | 112.25d | 2015-03-25 | 2015-08-28 |  | 0d |  |  |  | 1272.7h | 223,726.56 |
| 51 | 3.13.1 | Compra de proyector | manual | 0.75d | 2015-03-25 | 2015-03-25 |  |  |  |  | Vicente Pérez [10%] | 0.7h | 6.56 |
| 52 | 3.13.2 | Poner butacas | manual | 15d | 2015-04-08 | 2015-04-29 | 54 |  |  |  | Butacas; Instaladores butacas/moqueta | 120h | 59,600 |
| 53 | 3.13.3 | Instalar aire acondicionado | manual | 20d | 2015-06-24 | 2015-07-22 | 41 |  |  |  | Aire acondicionado; Instalador AC experimentado; Instalador AC Nobel | 320h | 110,400 |
| 54 | 3.13.4 | Moqueta | manual | 10d | 2015-03-25 | 2015-04-08 | 38 |  |  |  | Instaladores butacas/moqueta; Moqueta | 80h | 9,400 |
| 55 | 3.13.5 | Iluminado | manual | 45d | 2015-06-24 | 2015-08-26 | 41 |  |  |  | Aprendices electricos; Iluminado; Oficiales electricos | 720h | 42,400 |
| 56 | 3.13.6 | Limpieza | manual | 2d | 2015-08-26 | 2015-08-28 | 55 |  |  |  | Material de limpieza; Operarios de limpieza | 32h | 1,920 |
| 57 | 3.14 | **Portal web** |  | 39.25d? | 2015-02-19 | 2015-04-15 |  |  |  |  |  | 1307h | 11,078.12 |
| 58 | 3.14.1 | Diseño web (cliente) |  | 6.12d | 2015-02-19 | 2015-02-27 |  | 27.12d | 0d |  | Alba Martínez; Ana Sebastián (A) | 98h | 826.88 |
| 59 | 3.14.2 | Diseño web (gráfico) |  | 6.12d | 2015-02-19 | 2015-02-27 |  | 29.12d | 0d |  | Jose Luis Fernández; María Peris | 98h | 719.69 |
| 60 | 3.14.3 | Diseño web (servidor) |  | 6.75d | 2015-03-03 | 2015-03-11 | 24 | 1d | 0d |  | Encarna Marín; Enrique Moreno; Sebastián Del Rio | 144h | 1,290 |
| 61 | 3.14.4 | Edición de videos |  | 3d | 2015-02-27 | 2015-03-04 | 59 | 29.12d | 0d |  | Jose Luis Fernández | 24h | 165 |
| 62 | 3.14.5 | Publicación de videos |  | 1d | 2015-03-04 | 2015-03-05 | 61 | 29.12d |  |  | Jose Luis Fernández | 8h | 55 |
| 63 | 3.14.6 | Adquisición de recursos multimedia |  | 1.12d | 2015-02-27 | 2015-03-02 | 59 | 32d |  |  | María Peris | 9h | 70.31 |
| 64 | 3.14.7 | Programación web (cliente) |  | 6d | 2015-02-27 | 2015-03-09 | 58 | 27.12d | 0d |  | Alba Martínez; Ana Sebastián (A) | 96h | 810 |
| 65 | 3.14.8 | Entrega de web (1) | milestone, manual | 0d | 2015-03-09 | 2015-03-09 | 64 |  |  |  | Alba Martínez; Ana Sebastián (A) |  |  |
| 66 | 3.14.9 | Programación compra de entradas |  | 5d | 2015-03-11 | 2015-03-18 | 60 | 19.75d |  |  | Sebastián Del Rio | 40h | 337.5 |
| 67 | 3.14.10 | Programación de opiniones |  | 4.5d | 2015-03-12 | 2015-03-19 | 3 | 1d | 0d | start no earlier than 2015-03-12 | Enrique Moreno | 36h | 371.25 |
| 68 | 3.14.11 | Programación de avisos |  | 5d | 2015-03-11 | 2015-03-18 | 60 | 19.75d |  |  | Encarna Marín | 40h | 325 |
| 69 | 3.14.12 | Programación control de actualizaciones (peliculas y sesiones) | manual | 5d | 2015-03-03 | 2015-03-10 | 24 |  |  |  | Vicente Pérez | 35h | 328.12 |
| 70 | 3.14.13 | Programación de estadísticas | manual | 5d | 2015-03-03 | 2015-03-10 | 24 |  |  |  | Silvia Cerezo (P) | 40h | 275 |
| 71 | 3.14.14 | Programación web (servidor) |  | 5.62d | 2015-03-19 | 2015-03-26 | 67 | 1d | 0d |  | Sebastián Del Rio; Silvia Cerezo (P); Encarna Marín; Enrique Moreno | 160h | 1,350 |
| 72 | 3.14.15 | Terminar programación cliente | manual | 6d | 2015-03-10 | 2015-03-18 | 69 |  |  |  | Ana Sebastián (PW); María Peris; Vicente Pérez | 138h | 1,158.75 |
| 73 | 3.14.16 | Terminar programación servidor |  | 7d | 2015-03-26 | 2015-04-03 | 71 | 1d | 0d |  | Encarna Marín; Enrique Moreno; Sebastián Del Rio; Silvia Cerezo (P) | 197h | 1,661.88 |
| 74 | 3.14.17 | Entrega de web (2) | milestone, manual | 0d | 2015-04-03 | 2015-04-03 | 73 |  |  |  |  |  |  |
| 75 | 3.14.18 | Pruebas de web (1) | manual | 7d | 2015-04-03 | 2015-04-14 | 73 |  |  |  | Enrique Moreno; Rafael Benito | 112h | 1,058.75 |
| 76 | 3.14.19 | Instalar SO en servidor | manual | 1d | 2015-02-20 | 2015-02-23 | 31 |  |  |  | Rafael Benito | 8h | 68.75 |
| 77 | 3.14.20 | Configurar servidor | manual | 1d | 2015-02-23 | 2015-02-24 | 76 |  |  |  | Rafael Benito | 8h | 68.75 |
| 78 | 3.14.21 | Configurar router | manual | 1d | 2015-02-24 | 2015-02-25 | 77 |  |  |  | Rafael Benito | 8h | 68.75 |
| 79 | 3.14.22 | Instalación de web en servidor | manual | 1d | 2015-04-03 | 2015-04-06 | 73 |  |  |  | Rafael Benito | 8h | 68.75 |

| ID | WBS | Task | Type | Duration | Start | Finish | Predecessors | Total slack | Resources | Work | Cost |
| --- | --- | --- | --- | --- | --- | --- | --- | --- | --- | --- | --- |
| 80 | 4 | **Medición análisis y mejora** |  | 35d | 2015-02-25 | 2015-04-15 |  | 0d |  | 24h | 206.25 |
| 81 | 4.1 | Prueba de la instalación de servidor | manual | 3d | 2015-02-25 | 2015-03-02 | 78 |  | Rafael Benito | 24h | 206.25 |
| 82 | 4.2 | Entrega web (3) | milestone, manual | 0d | 2015-04-06 | 2015-04-06 | 79 |  |  |  |  |
| 83 | 4.3 | Pruebas de web (2) | manual | 7d | 2015-04-06 | 2015-04-15 | 79 |  |  |  |  |
